# TERMPROJECT2022

Schedule from Primavera P6, 2022-08-01 to 2022-12-13, data date 2022-08-01.

## Calendars

- Corporate - Standard Full Time: Mon-Fri 08:00-15:59; Sat-Sun off.

## Resources

| Resource | Group | Rate |
| --- | --- | --- |
| (New Resource) | labor | 63.4 |
| (New Resource) | labor | 54 |
| (New Resource) | labor | 53.15 |
| (New Resource) | labor | 51.4 |
| (New Resource) | labor | 45.85 |
| (New Resource) | labor | 45 |
| (New Resource) | labor | 55.25 |
| (New Resource) | labor | 47.8 |
| (New Resource) | labor | 53.15 |
| (New Resource) | labor | 42.92 |
| (New Resource) | labor | 60.7 |
| (New Resource) | material | 54 |
| (New Resource) | material | 11.1 |
| (New Resource) | material | 218 |
| (New Resource) | material | 3.26 |
| (New Resource) | material | 5 |
| (New Resource) | material | 7.75 |
| (New Resource) | material | 0.44 |
| (New Resource) | material | 2.57 |
| (New Resource) | material | 191 |
| (New Resource) | material | 1.25 |
| (New Resource) | material | 0.76 |
| (New Resource) | material | 350 |
| (New Resource) | material | 299 |
| (New Resource) | material | 1.46 |
| (New Resource) | material | 0.82 |
| (New Resource) | material | 0.68 |
| (New Resource) | material | 0.76 |
| (New Resource) | material | 10.55 |
| (New Resource) | material | 4.28 |
| (New Resource) | material | 23.5 |
| (New Resource) | material | 425 |
| (New Resource) | material | 3.2 |
| (New Resource) | material | 1.14 |
| (New Resource) | material | 1575 |
| (New Resource) | material | 0.97 |
| (New Resource) | material | 15.9 |
| (New Resource) | material | 1.1 |
| (New Resource) | material | 96 |
| (New Resource) | material | 4.43 |
| (New Resource) | material | 1450 |
| (New Resource) | material | 0.02 |
| (New Resource) | material | 3.56 |
| (New Resource) | material | 22 |
| (New Resource) | material | 0.83 |
| (New Resource) | material | 1200 |
| (New Resource) | material | 1400 |
| (New Resource) | material | 6 |
| (New Resource) | material | 0.42 |
| Carpenter | labor | 54.7 |
| (New Resource) | material | 19.95 |
| Common Laborer | labor | 45.6 |
| (New Resource) | labor | 60.4 |
| (New Resource) | labor | 58.3 |
| (New Resource) | labor | 53.15 |
| (New Resource) | labor | 60.7 |
| (New Resource) | labor | 63.85 |
| (New Resource) | labor | 61.85 |
| (New Resource) | labor | 49.6 |
| (New Resource) | labor | 47.6 |

## Schedule

| ID | Activity | Type | Duration | Start | Finish | Predecessors | Resources | Cost |
| --- | --- | --- | --- | --- | --- | --- | --- | --- |
| 22NB03-01A1050 | Backfill |  | 1d | 2022-08-15 | 2022-08-15 | 22NB03-01A1040 | (New Resource) [8]; Carpenter [16 h] | 878.56 |
| 22NB03-01A1060 | Form in place for slab on grade |  | 1d | 2022-08-16 | 2022-08-16 | 22NB03-01A1050 | (New Resource) [8]; Common Laborer [8 h]; Carpenter [24 h] | 1,706.08 |
| 22NB03-01A1070 | Applying vapor retarders (polyethylene vapor barrier) for slabs and reinforcing concrete slab |  | 2d | 2022-08-17 | 2022-08-18 | 22NB03-01A1060 | (New Resource) [16]; Carpenter [16 h] | 971.2 |
| 22NB03-01A1080 | Pouring concrete for slab |  | 1d | 2022-08-19 | 2022-08-19 | 22NB03-01A1550, 22NB03-01A1070 | (New Resource) [8]; Common Laborer [24 h]; Carpenter [16 h]; (New Resource) [8 h]; (New Resource) [32 h] | 6,331.6 |
| 22NB03-01A1090 | Structural steel columns |  | 1d | 2022-08-22 | 2022-08-22 | 22NB03-01A1080 | (New Resource) [8]; (New Resource) [40 h]; (New Resource) [160 h] | 17,578 |
| 22NB03-01A1100 | Structural steel members |  | 1d | 2022-08-22 | 2022-08-22 | 22NB03-01A1080 | (New Resource) [8 h]; (New Resource) [32 h] | 3,429.2 |
| 22NB03-01A1110 | Framing, wood floor beam |  | 1d | 2022-08-23 | 2022-08-23 | 22NB03-01A1090, 22NB03-01A1100 | (New Resource) [8]; Carpenter [16 h] | 12,075.2 |
| 22NB03-01A1120 | Framing, floor joists |  | 4d | 2022-08-24 | 2022-08-29 | 22NB03-01A1090, 22NB03-01A1110 | (New Resource) [32]; Carpenter [16 h] | 39,275.2 |
| 22NB03-01A1130 | Wood framing, bridging |  | 2d | 2022-08-30 | 2022-08-31 | 22NB03-01A1090, 22NB03-01A1120 | (New Resource) [16]; Carpenter [16 h] | 888.48 |
| 22NB03-01A1140 | Sheathing, subfloor plywood |  | 2d | 2022-09-01 | 2022-09-02 | 22NB03-01A1090, 22NB03-01A1130 | (New Resource) [16]; Carpenter [80 h] | 4,388.16 |
| 22NB03-01A1150 | wall framing, columns |  | 2d | 2022-09-05 | 2022-09-06 | 22NB03-01A1140 | Carpenter [80 h] | 4,376 |
| 22NB03-01A1160 | Brick columns |  | 5d | 2022-09-07 | 2022-09-13 | 22NB03-01A1150 | (New Resource) [40]; (New Resource) [40 h] | 4,432 |
| 22NB03-01A1170 | Wood framing studs, external walls |  | 2d | 2022-09-14 | 2022-09-15 | 22NB03-01A1160 | Carpenter [80 h] | 4,376 |
| 22NB03-01A1180 | Wood framing headers, external walls |  | 1d | 2022-09-16 | 2022-09-16 | 22NB03-01A1170 | Carpenter [80 h] | 4,376 |
| 22NB03-01A1190 | Wood framing plates, external walls |  | 2d | 2022-09-19 | 2022-09-20 | 22NB03-01A1180, 22NB03-01A1170 | Carpenter [80 h] | 4,376 |
| 22NB03-01A1200 | Wood framing, studs, interior walls |  | 2d | 2022-09-14 | 2022-09-15 | 22NB03-01A1160 | Carpenter [80 h] | 4,376 |
| 22NB03-01A1210 | Wood framing headers, interior walls |  | 1d | 2022-09-16 | 2022-09-16 | 22NB03-01A1200 | Carpenter [80 h] | 4,376 |
| 22NB03-01A1220 | Sheathing, plywood for exterior walls |  | 1.9d | 2022-09-21 | 2022-09-22 | 22NB03-01A1180, 22NB03-01A1190 | (New Resource) [15.2]; Carpenter [80 h] | 4,386.34 |
| 22NB03-01A1230 | Prefabricated structural wood for wood trusses |  | 1.73d | 2022-09-22 | 2022-09-26 | 22NB03-01A1220 | (New Resource) [13.83]; (New Resource) [40 h]; Carpenter [160 h] | 11,333.1 |
| 22NB03-01A1240 | Shething, plywood pneumatic nailed for roof |  | 4d | 2022-09-26 | 2022-09-30 | 22NB03-01A1230 | (New Resource) [32]; Carpenter [80 h] | 4,402.24 |
| 22NB03-01A1250 | Plumbing |  | 5d | 2022-10-07 | 2022-10-14 | 22NB03-01A1260 |  |  |
| 22NB03-01A1260 | HVAC |  | 5d | 2022-09-30 | 2022-10-07 | 22NB03-01A1240 |  |  |
| 22NB03-01A1270 | Electrical |  | 5d | 2022-10-14 | 2022-10-21 | 22NB03-01A1250 |  |  |
| 22NB03-01A1280 | Building Insulations in walls |  | 2.46d | 2022-10-21 | 2022-10-26 | 22NB03-01A1250, 22NB03-01A1260, 22NB03-01A1270 | (New Resource) [19.68]; Carpenter [40 h] | 2,207.09 |
| 22NB03-01A1290 | Gypsum board, drywall for walls |  | 2.75d | 2022-10-26 | 2022-10-28 | 22NB03-01A1210, 22NB03-01A1280 | (New Resource) [22]; Carpenter [80 h] | 4,408.12 |
| A1000 | Finish Milestone | milestone | 0d | 2022-12-13 | 2022-12-13 | 22NB03-01A1340 FF, 22NB03-01A1410 FF, 22NB03-01A1430 FF, 22NB03-01A1480 FF, 22NB03-01A1500 FF, 22NB03-01A1510 FF, 22NB03-01A1520 FF, 22NB03-01A1540 FF |  |  |
| 22NB03-01A1300 | Brick veneer |  | 12.14d | 2022-09-22 | 2022-10-11 | 22NB03-01A1220 | (New Resource) [97.12]; (New Resource) [120 h]; (New Resource) [80 h] | 10,982.65 |
| 22NB03-01A1310 | Masonary anchor and reinforcement, wall ties |  | 3d | 2022-10-11 | 2022-10-14 | 22NB03-01A1300 | (New Resource) [24]; (New Resource) [40 h] | 2,774 |
| 22NB03-01A1550 | Slab reinforcement (welded wire fabric) |  | 1d | 2022-08-17 | 2022-08-17 | 22NB03-01A1060 | (New Resource) [16 h]; (New Resource) [8] | 1,147.2 |
| 22NB03-01A1320 | Install interior doors |  | 0.75d | 2022-10-28 | 2022-10-31 | 22NB03-01A1290 | (New Resource) [6]; Carpenter [80 h] | 6,170 |
| 22NB03-01A1330 | Install exterior doors |  | 0.96d | 2022-10-14 | 2022-10-14 | 22NB03-01A1310 | (New Resource) [7.68]; Carpenter [80 h] | 7,065.17 |
| 22NB03-01A1340 | Manufactured fireplace, prefabricated |  | 1d | 2022-10-28 | 2022-10-31 | 22NB03-01A1290 | (New Resource) [8]; Carpenter [40 h] | 14,788 |
| 22NB03-01A1350 | Building insulation above ceiling |  | 6d | 2022-10-17 | 2022-10-24 | 22NB03-01A1260, 22NB03-01A1330 | (New Resource) [48]; Carpenter [40 h] | 2,242.72 |
| 22NB03-01A1360 | Sheathing, plywood for soffit |  | 0.87d | 2022-10-25 | 2022-10-25 | 22NB03-01A1350 | (New Resource) [6.97]; Carpenter [80 h] | 4,381.29 |
| 22NB03-01A1370 | Place asphalt shingles, felt underlayment |  | 1d | 2022-10-25 | 2022-10-26 | 22NB03-01A1240, 22NB03-01A1360 | (New Resource) [8]; (New Resource) [40 h] | 2,019.44 |
| 22NB03-01A1380 | Place asphalt shingles for roof |  | 11.6d | 2022-10-26 | 2022-11-11 | 22NB03-01A1370 | (New Resource) [92.8]; (New Resource) [40 h] | 10,892.8 |
| 22NB03-01A1390 | Shingles, aluminum, end wall flashingand valley section |  | 2d | 2022-11-11 | 2022-11-15 | 22NB03-01A1370, 22NB03-01A1380 | (New Resource) [4.23]; Carpenter [40 h] | 2,201.55 |
| 22NB03-01A1400 | Install gutters |  | 0.54d | 2022-11-15 | 2022-11-16 | 22NB03-01A1390 | (New Resource) [40 h]; (New Resource) [4.32]; Common Laborer [160 h] | 13,943.92 |
| 22NB03-01A1410 | Install downspouts |  | 5d | 2022-11-16 | 2022-11-23 | 22NB03-01A1400 |  |  |
| 22NB03-01A1420 | Install resilient flooring tiles |  | 1d | 2022-10-28 | 2022-10-31 | 22NB03-01A1290 | (New Resource) [40 h]; (New Resource) [8] | 2,134.8 |
| 22NB03-01A1430 | Stucco for exterior |  | 1d | 2022-10-12 | 2022-10-13 | 22NB03-01A1460 | (New Resource) [120 h]; (New Resource) [80 h]; (New Resource) [8] | 9,839.52 |
| 22NB03-01A1440 | Gypsum board, drywall for ceiling |  | 1.25d | 2022-10-25 | 2022-10-26 | 22NB03-01A1350 | (New Resource) [10]; Carpenter [80 h] | 4,388.5 |
| 22NB03-01A1450 | Install windows |  | 6.67d | 2022-10-14 | 2022-10-24 | 22NB03-01A1310 | (New Resource) [53.37]; Carpenter [40 h] | 24,868.83 |
| 22NB03-01A1460 | Place parapet wall |  | 1.2d | 2022-10-11 | 2022-10-12 | 22NB03-01A1300 | (New Resource) [80 h]; (New Resource) [120 h]; (New Resource) [9.6] | 10,278 |
| 22NB03-01A1470 | Painting and coating walls and ceiling |  | 7.59d | 2022-10-31 | 2022-11-10 | 22NB03-01A1320, 22NB03-01A1440, 22NB03-01A1450 | (New Resource) [40 h]; (New Resource) [60.72] | 1,913.21 |
| 22NB03-01A1480 | Install carpet |  | 2.07d | 2022-11-10 | 2022-11-14 | 22NB03-01A1470 | (New Resource) [40 h]; (New Resource) [16.57] | 2,389.41 |
| 22NB03-01A1490 | Install ceramic tiles |  | 13.55d | 2022-11-10 | 2022-11-29 | 22NB03-01A1470 | (New Resource) [40 h]; (New Resource) [108.4] | 4,306.95 |
| 22NB03-01A1500 | Custom cabinets for kitchen |  | 5d | 2022-12-06 | 2022-12-13 | 22NB03-01A1530 |  |  |
| 22NB03-01A1510 | Custom cabinets for bathroom |  | 5d | 2022-12-06 | 2022-12-13 | 22NB03-01A1530 |  |  |
| 22NB03-01A1520 | Custom cabinets for laundry room |  | 5d | 2022-12-06 | 2022-12-13 | 22NB03-01A1530 |  |  |
| 22NB03-01A1530 | Plumbing fixtures for kitchen, bathroom and laundry room |  | 5d | 2022-11-29 | 2022-12-06 | 22NB03-01A1490, 22NB03-01A1420 |  |  |
| 22NB03-01A1540 | Bath accessories |  | 5d | 2022-12-06 | 2022-12-13 | 22NB03-01A1530 |  |  |
| 22NB03-01A1000 | Excavation |  | 3d | 2022-08-01 | 2022-08-03 |  | Common Laborer [24 h]; (New Resource) [24 h] | 2,544 |
| 22NB03-01A1010 | Forms in place for footing |  | 4d | 2022-08-04 | 2022-08-09 | 22NB03-01A1000 | (New Resource) [32]; Common Laborer [32 h]; Carpenter [96 h] | 6,792.64 |
| 22NB03-01A1020 | Install vent box for foundation |  | 1d | 2022-08-10 | 2022-08-10 | 22NB03-01A1010 | (New Resource) [8]; (New Resource) [8 h] | 601.6 |
| 22NB03-01A1030 | Reinforcing in place for footing |  | 1d | 2022-08-10 | 2022-08-10 | 22NB03-01A1010 | (New Resource) [8]; (New Resource) [32 h] | 13,542.4 |
| 22NB03-01A1040 | Pouring concrete for footings |  | 2d | 2022-08-11 | 2022-08-12 | 22NB03-01A1020, 22NB03-01A1030 | (New Resource) [16]; Carpenter [96 h]; Common Laborer [64 h]; (New Resource) [16 h]; (New Resource) [32 h] | 15,383.2 |
